# 45 — Sync and merging on the device
#
# Fetch, merge, push; conflicts; uploads. Workflows 7, 8, 9, 11.

task sync "Sync" {
  depends storage.working_copy, cifra_js.merge, foundation.e2e_api

  task engine "Sync engine" {
    effort 3d
    allocate team
    depends service.change_check
    note "When it runs (open, foreground, network back, after save, every five minutes), the change check first, fetch, cifra-aware merge, push, retried three times on a lost race. Workflow 8. Tests: unit (when it runs, the retry policy); behavior (fetch, cifra-aware merge and push against a local git remote with a second clone racing it, retried three times); e2e-api (two isomorphic-git devices against the stack: both edit, the change check, a clean merge pushed and fetched back — the two-device journey's sync half)."
  }
  task unsaved "Merging under unsaved changes" {
    effort 2d
    allocate team
    depends !engine
    note "Base, theirs and the working text merged; the edits stay unsaved on top. DIRECTION §3.1, workflow 4. Tests: behavior (base, theirs and the working text merged against a local remote; the edits still unsaved on top; a merge that conflicts with unsaved text — DIRECTION §3.1, workflow 4)."
  }
  task states "States on the shelf" {
    effort 1d
    allocate team
    depends !engine, foundation.e2e_web
    note "Syncing, saves waiting, offline since, needs you, no longer shared with you; the one quiet mark; sync now. Workflow 8. Tests: unit (deriving each state); behavior (the shelf's marks rendered with Testing Library and axe, each carried by a word); e2e-web (offline then back on the stack: offline since, saves waiting, then synced; sync now)."
  }
  task conflicts "Conflicts" {
    effort 4d
    allocate team
    depends !engine, foundation.e2e_web
    note "The book paused while a merge waits; the conflict model shown in musical terms; keep mine, take theirs, edit with markers; deleted against edited; abandon the merge. Workflow 9. Tests: unit (the conflict model in musical terms); behavior (the conflict screens with Testing Library and axe; keyboard paths through keep mine, take theirs, edit with markers, abandon); e2e-web (two devices — two browser contexts on the stack — edit the same bar, the conflict settled each way on phone, tablet and computer, axe on every conflict screen)."
  }
  task lost_access "Losing access" {
    effort 1d
    allocate team
    depends !engine, service.sharing, foundation.e2e_web
    note "Refused for not being a member: no longer shared with you, readable, never synced; unsaved saves kept, fork or download offered. Workflow 8. Tests: behavior (a refusal for not being a member marks the book, keeps unsaved saves, stops syncing); e2e-web (the owner removes a member on the stack; the member's device shows no longer shared with you, the song still readable, fork and download offered; axe)."
  }
  task upload "Upload a zip" {
    effort 4d
    allocate team
    depends !engine, storage.download
    note "Read as a remote to pull from; the preview; edits never committed as a commit; no history; unrelated history; marked files left out; committed markers offer the latest version without history; history rewritten to canonical. Workflow 7. Tests: unit (reading a zip as a remote); behavior (each workflow-7 case against a local repository: no history, unrelated history, marked files left out, committed markers, history rewritten to canonical; edits never committed as a commit)."
  }
  task fork_follow "Following an original" {
    effort 2d
    allocate team
    depends !engine
    note "The original's new saves counted; bring them in through the preview; the original going away. Workflow 11. Tests: behavior (the original's new saves counted, brought in through the preview, the original gone — against local remotes); e2e-api (fork on the stack, push to the original, the fork's device counts and brings in the new save)."
  }
}
